# AgroTech

Schedule from MS Project XML, 2026-09-01 to 2026-12-03, status date 2026-10-05, A marks actual dates.
Equipo AgroTech

## Calendars

- Estándar Colombia: Mon-Fri 08:00-12:00, 13:00-17:00; Sat-Sun off. Exceptions (off unless hours are given): 2026-10-12, 2026-11-02, 2026-11-16.

## Resources

| Resource | Group |
| --- | --- |
| Julio Carrillo | Project Manager / Software Architect |
| Julio Durán | Frontend Developer / QA Tester |
| Geron Vergara | Backend Developer / DevOps |

## Schedule

| ID | WBS | Task | Type | Duration | Start | Finish | Predecessors | Complete | Constraint | Resources |
| --- | --- | --- | --- | --- | --- | --- | --- | --- | --- | --- |
| 1 | 1 | **Requisitos (Entrega 1)** |  | 9d | 2026-09-01 | 2026-09-11 |  | 100% |  |  |
| 2 | 1.1 | Conformar el equipo y definir proyecto y cliente |  | 2d | 2026-09-01 A | 2026-09-02 A |  | 100% |  | Julio Carrillo; Julio Durán; Geron Vergara |
| 3 | 1.2 | Levantamiento de información con el cliente |  | 4d | 2026-09-03 A | 2026-09-08 A | 2 | 100% |  | Julio Carrillo; Julio Durán |
| 4 | 1.3 | Redactar el SRS |  | 3d | 2026-09-09 A | 2026-09-11 A | 3 | 100% |  | Julio Carrillo |
| 5 | 1.4 | Hito: Entrega 1 — SRS | milestone | 0d | 2026-09-11 A | 2026-09-11 A | 4 | 100% |  |  |
| 6 | 2 | **Organización y metodología (Entrega 2)** |  | 9d | 2026-09-03 | 2026-09-15 |  | 100% |  |  |
| 7 | 2.1 | Investigar la metodología y preparar el debate |  | 3d | 2026-09-03 A | 2026-09-07 A | 2 | 100% |  | Geron Vergara |
| 8 | 2.2 | Configurar Jira, backlog y GitHub |  | 2d | 2026-09-14 A | 2026-09-15 A | 5 | 100% |  | Geron Vergara |
| 9 | 2.3 | Requisitos de aceptación y carta de aceptación |  | 2d | 2026-09-14 A | 2026-09-15 A | 5 | 100% |  | Julio Durán |
| 10 | 2.4 | Hito: Entrega 2 — organización y metodología | milestone | 0d | 2026-09-15 A | 2026-09-15 A | 7, 8, 9 | 100% |  |  |
| 11 | 3 | **Diseño del sistema (Entrega 3)** |  | 15d | 2026-09-14 | 2026-10-02 |  | 100% |  |  |
| 12 | 3.1 | Casos de uso, flujo de información y secuencia |  | 5d | 2026-09-14 A | 2026-09-18 A | 5 | 100% |  | Julio Carrillo |
| 13 | 3.2 | Diagrama de clases y modelo entidad–relación |  | 5d | 2026-09-21 A | 2026-09-25 A | 12 | 100% |  | Julio Carrillo; Geron Vergara |
| 14 | 3.3 | Arquitectura y despliegue |  | 3d | 2026-09-28 A | 2026-09-30 A | 13 | 100% |  | Julio Carrillo; Geron Vergara |
| 15 | 3.4 | Documento de diseño del sistema |  | 2d | 2026-10-01 A | 2026-10-02 A | 14 | 100% |  | Julio Carrillo |
| 16 | 3.5 | Hito: Entrega 3 — diseño del sistema | milestone | 0d | 2026-10-02 A | 2026-10-02 A | 15, 10 | 100% |  |  |
| 17 | 4 | **Plan de gestión del proyecto (Entrega 4)** |  | 5d | 2026-10-05 | 2026-10-09 |  | 100% |  |  |
| 18 | 4.1 | Plan de gestión: riesgos, métricas, cronograma y calidad |  | 5d | 2026-10-05 A | 2026-10-09 A | 16 | 100% |  | Julio Carrillo |
| 19 | 4.2 | Hito: Entrega 4 — plan de gestión | milestone | 0d | 2026-10-09 A | 2026-10-09 A | 18 | 100% |  |  |
| 20 | 5 | **Construcción del MVP (Entrega 5)** |  | 28d | 2026-10-05 | 2026-11-13 |  |  |  |  |
| 21 | 5.1 | Entornos, base de datos e integración continua |  | 4d | 2026-10-05 A | 2026-10-08 A | 16 | 100% |  | Geron Vergara |
| 22 | 5.2 | Estructura de la app y navegación por rol |  | 3d | 2026-10-05 A | 2026-10-07 A | 16 | 100% |  | Julio Durán |
| 23 | 5.3 | Registro e inicio de sesión (RF-01) |  | 4d | 2026-10-09 A | 2026-10-09 A | 21, 22 | 100% |  | Geron Vergara; Julio Durán |
| 24 | 5.4 | Validar prototipos de baja fidelidad con la asociación (UCD) |  | 1d | 2026-10-13 | 2026-10-13 | 19 |  |  | Julio Carrillo |
| 25 | 5.5 | Plan de pruebas y casos de prueba |  | 3d | 2026-10-09 A | 2026-10-09 A | 24 | 100% |  | Julio Carrillo |
| 26 | 5.6 | Publicación de productos y catálogo (RF-02, RF-03) |  | 6d | 2026-10-09 A | 2026-10-09 A | 23, 24 | 100% |  | Julio Durán; Geron Vergara |
| 27 | 5.7 | Preparar el entorno de producción en AWS |  | 2d | 2026-10-09 A | 2026-10-09 A | 21, 25 | 100% |  | Julio Carrillo |
| 28 | 5.8 | Editar precio y cantidad de una publicación (RF-10a) |  | 2d | 2026-10-09 A | 2026-10-09 A | 23, 27 | 100% |  | Julio Carrillo |
| 29 | 5.9 | Carrito, pedidos, estados y pago en línea (RF-04, RF-13, RF-21) |  | 9d | 2026-10-09 A | 2026-10-09 A | 26 | 100% |  | Geron Vergara; Julio Durán |
| 30 | 5.10 | Modo sin conexión y sincronización (RF-17) |  | 6d | 2026-10-09 A | 2026-10-09 A | 26, 28 | 100% |  | Julio Carrillo |
| 31 | 5.11 | Chat por pedido (RF-05) |  | 4d | 2026-10-09 A | 2026-10-09 A | 29 | 100% |  | Geron Vergara |
| 32 | 5.12 | Calificaciones (RF-06) |  | 2d | 2026-10-09 A | 2026-10-09 A | 29 | 100% |  | Julio Durán |
| 33 | 5.13 | Notificación push de nuevo pedido (RF-16a) |  | 2d | 2026-10-09 A | 2026-10-09 A | 29, 32 | 100% |  | Julio Durán |
| 34 | 5.14 | Panel de ventas (RF-07) |  | 3d | 2026-10-09 A | 2026-10-09 A | 29, 30 | 100% |  | Julio Carrillo |
| 35 | 5.15 | Pedidos activos del consumidor (RF-15a) |  | 1d | 2026-10-09 A | 2026-10-09 A | 34 | 100% |  | Julio Carrillo |
| 36 | 5.16 | Integración y pruebas unitarias |  | 3d | 2026-10-09 A | 2026-10-09 A | 27, 30, 31, 33, 35 | 100% |  | Julio Carrillo; Julio Durán; Geron Vergara |
| 37 | 5.17 | Hito: Entrega 5 — MVP funcional | milestone | 0d | 2026-11-13 | 2026-11-13 | 36 |  | start no earlier than 2026-11-13 |  |

Notes:
- 2: PERT a=1 m=2 b=3 te=2.00. R (ejecuta): Julio Carrillo, Julio Durán, Geron Vergara. A (aprueba): Julio Carrillo.
- 3: PERT a=3 m=4 b=6 te=4.17. R (ejecuta): Julio Carrillo, Julio Durán. A (aprueba): Julio Carrillo.
- 4: PERT a=2 m=3 b=5 te=3.17. R (ejecuta): Julio Carrillo. A (aprueba): Julio Carrillo.
- 7: PERT a=2 m=3 b=4 te=3.00. R (ejecuta): Geron Vergara. A (aprueba): Julio Carrillo.
- 8: PERT a=1 m=2 b=3 te=2.00. R (ejecuta): Geron Vergara. A (aprueba): Julio Carrillo.
- 9: PERT a=1 m=2 b=4 te=2.17. R (ejecuta): Julio Durán. A (aprueba): Julio Carrillo.
- 12: PERT a=4 m=5 b=7 te=5.17. R (ejecuta): Julio Carrillo. A (aprueba): Julio Carrillo.
- 13: PERT a=4 m=5 b=7 te=5.17. R (ejecuta): Julio Carrillo, Geron Vergara. A (aprueba): Julio Carrillo.
- 14: PERT a=2 m=3 b=4 te=3.00. R (ejecuta): Julio Carrillo, Geron Vergara. A (aprueba): Julio Carrillo.
- 15: PERT a=1 m=2 b=3 te=2.00. R (ejecuta): Julio Carrillo. A (aprueba): Julio Carrillo.
- 18: PERT a=4 m=5 b=7 te=5.17. R (ejecuta): Julio Carrillo. A (aprueba): Julio Carrillo.
- 21: PERT a=3 m=4 b=6 te=4.17. R (ejecuta): Geron Vergara. A (aprueba): Geron Vergara.
- 22: PERT a=2 m=3 b=4 te=3.00. R (ejecuta): Julio Durán. A (aprueba): Julio Durán.
- 23: PERT a=3 m=4 b=6 te=4.17. R (ejecuta): Geron Vergara, Julio Durán. A (aprueba): Julio Carrillo.
- 24: PERT a=1 m=1 b=2 te=1.17. R (ejecuta): Julio Carrillo. A (aprueba): Julio Durán.
- 25: PERT a=2 m=3 b=4 te=3.00. R (ejecuta): Julio Carrillo. A (aprueba): Julio Durán.
- 26: PERT a=4 m=6 b=8 te=6.00. R (ejecuta): Julio Durán, Geron Vergara. A (aprueba): Julio Carrillo.
- 27: PERT a=1 m=2 b=4 te=2.17. R (ejecuta): Julio Carrillo. A (aprueba): Geron Vergara.
- 28: PERT a=1 m=2 b=3 te=2.00. R (ejecuta): Julio Carrillo. A (aprueba): Julio Carrillo.
- 29: PERT a=6 m=9 b=13 te=9.17. R (ejecuta): Geron Vergara, Julio Durán. A (aprueba): Julio Carrillo.
- 30: PERT a=4 m=6 b=10 te=6.33. R (ejecuta): Julio Carrillo. A (aprueba): Julio Carrillo.
- 31: PERT a=3 m=4 b=6 te=4.17. R (ejecuta): Geron Vergara. A (aprueba): Julio Carrillo.
- 32: PERT a=1 m=2 b=3 te=2.00. R (ejecuta): Julio Durán. A (aprueba): Julio Carrillo.
- 33: PERT a=1 m=2 b=3 te=2.00. R (ejecuta): Julio Durán. A (aprueba): Geron Vergara.
- 34: PERT a=2 m=3 b=4 te=3.00. R (ejecuta): Julio Carrillo. A (aprueba): Julio Carrillo.
- 35: PERT a=1 m=1 b=2 te=1.17. R (ejecuta): Julio Carrillo. A (aprueba): Julio Carrillo.
- 36: PERT a=2 m=3 b=5 te=3.17. R (ejecuta): Julio Carrillo, Julio Durán, Geron Vergara. A (aprueba): Julio Durán.

| ID | WBS | Task | Type | Duration | Start | Finish | Predecessors | Resources |
| --- | --- | --- | --- | --- | --- | --- | --- | --- |
| 38 | 6 | **Pruebas, despliegue y cierre (Entrega 6)** |  | 13d | 2026-11-17 | 2026-12-03 |  |  |
| 39 | 6.1 | Pruebas del sistema y de aceptación |  | 3d | 2026-11-17 | 2026-11-19 | 37, 25 | Julio Durán; Julio Carrillo |
| 40 | 6.2 | Corrección de errores |  | 3d | 2026-11-20 | 2026-11-24 | 39 | Geron Vergara; Julio Durán |
| 41 | 6.3 | Publicar la versión final |  | 1d | 2026-11-25 | 2026-11-25 | 40 | Geron Vergara |
| 42 | 6.4 | Piloto con la asociación y prueba de usabilidad |  | 4d | 2026-11-26 | 2026-12-01 | 41 | Julio Carrillo; Julio Durán; Geron Vergara |
| 43 | 6.5 | Informe final y carta de aceptación firmada |  | 2d | 2026-12-02 | 2026-12-03 | 42 | Julio Carrillo |
| 44 | 6.6 | Hito: Entrega 6 — cierre del proyecto | milestone | 0d | 2026-12-03 | 2026-12-03 | 43 |  |

Notes:
- 39: PERT a=2 m=3 b=5 te=3.17. R (ejecuta): Julio Durán, Julio Carrillo. A (aprueba): Julio Durán.
- 40: PERT a=2 m=3 b=5 te=3.17. R (ejecuta): Geron Vergara, Julio Durán. A (aprueba): Julio Durán.
- 41: PERT a=1 m=1 b=2 te=1.17. R (ejecuta): Geron Vergara. A (aprueba): Geron Vergara.
- 42: PERT a=3 m=4 b=6 te=4.17. R (ejecuta): Julio Carrillo, Julio Durán, Geron Vergara. A (aprueba): Julio Carrillo.
- 43: PERT a=1 m=2 b=3 te=2.00. R (ejecuta): Julio Carrillo. A (aprueba): Julio Carrillo.
